# Proyecto Olist_v1

Schedule from MS Project, 2022-07-05 to 2022-07-29, A marks actual dates.

## Calendars

- Estándar: Mon-Fri 09:00-13:00, 15:00-19:00; Sat-Sun off.

## Resources

| Resource |
| --- |
| Robert Mattos |
| Carlos Blanco |
| Andres Andrade |
| Miria Cristina |

## Schedule

| ID | WBS | Task | Type | Duration | Start | Finish | Predecessors | Complete | Remaining | Total slack | Resources | Work | Actual work |
| --- | --- | --- | --- | --- | --- | --- | --- | --- | --- | --- | --- | --- | --- |
| 1 | 1 | **Proyecto Olist Machine Learning** |  | 19d? | 2022-07-05 A | 2022-07-29 |  | 81% | 3.61d? | 0d |  | 1480h | 1184h |
| 2 | 1.1 | **Elaboracion Kick Off** |  | 2d | 2022-07-05 A | 2022-07-06 A |  | 100% |  |  |  | 24h | 24h |
| 3 | 1.1.1 | Alcance, Objetivos, Metodologia | manual | 1d | 2022-07-05 A | 2022-07-05 A |  | 100% |  |  | Robert Mattos | 8h | 8h |
| 4 | 1.1.2 | Elaboracion de Cronograma | manual | 1d | 2022-07-05 A | 2022-07-05 A |  | 100% |  |  | Robert Mattos | 8h | 8h |
| 5 | 1.1.3 | Project Charter (Documentacion) | manual | 1d | 2022-07-06 A | 2022-07-06 A | 4 | 100% |  |  | Robert Mattos | 8h | 8h |
| 6 | 1.2 | **Analisis Tecnico/Infraestructura Preliminar** |  | 4d | 2022-07-05 A | 2022-07-08 A |  | 100% |  |  |  | 144h | 144h |
| 7 | 1.2.1 | Plataforma Tecnologica | manual | 1d | 2022-07-05 A | 2022-07-05 A |  | 100% |  |  | Carlos Blanco; Miria Cristina; Andres Andrade; Robert Mattos | 32h | 32h |
| 8 | 1.2.2 | Guia de Instalacion de SW | manual | 1d | 2022-07-06 A | 2022-07-06 A | 7 | 100% |  |  | Andres Andrade; Carlos Blanco; Miria Cristina | 24h | 24h |
| 9 | 1.2.3 | Verificar Funcionalidad | manual | 1d | 2022-07-07 A | 2022-07-07 A | 8 | 100% |  |  | Andres Andrade; Carlos Blanco; Miria Cristina | 24h | 24h |
| 10 | 1.2.4 | Analisis EDA | manual | 1d | 2022-07-07 A | 2022-07-07 A | 8 | 100% |  |  | Andres Andrade; Carlos Blanco; Robert Mattos | 24h | 24h |
| 11 | 1.2.5 | Elaboracion de Indicadores KPI | manual | 1d | 2022-07-08 A | 2022-07-08 A | 9 | 100% |  |  | Andres Andrade; Carlos Blanco; Miria Cristina; Robert Mattos | 32h | 32h |
| 12 | 1.2.6 | Generacion de la Cuenta del GitHub | manual | 1d | 2022-07-08 A | 2022-07-08 A |  | 100% |  |  | Miria Cristina | 8h | 8h |
| 13 | 1.3 | Entregable I : Documentacion Tecnica | manual | 1d | 2022-07-08 A | 2022-07-08 A | 9 | 100% |  |  | Miria Cristina | 8h | 8h |
| 14 | 1.4 | **Hito Semana1** |  | 0d | 2022-07-08 A | 2022-07-08 | 9 | 82% | 0d |  |  | 1304h | 1008h |
| 15 | 1.4.1 | **Semana II** |  | 5d | 2022-07-11 A | 2022-07-15 A |  | 100% |  |  |  | 448h | 448h |
| 16 | 1.4.1.1 | **I. Reglas de Negocio** |  | 2d | 2022-07-11 A | 2022-07-12 A |  | 100% |  |  |  | 16h | 16h |
| 17 | 1.4.1.1.1 | Identificacion de Reglas de Negocio | manual | 2d | 2022-07-11 A | 2022-07-12 A | 12 | 100% |  |  | Robert Mattos | 16h | 16h |
| 18 | 1.4.1.2 | **II Creacion de DW** |  | 4d | 2022-07-11 A | 2022-07-14 A |  | 100% |  |  |  | 384h | 384h |
| 19 | 1.4.1.2.1 | 1. LImpieza de Datos | manual | 2d | 2022-07-11 A | 2022-07-12 A | 12 | 100% |  |  | Andres Andrade; Miria Cristina | 32h | 32h |
| 20 | 1.4.1.2.2 | 2. Normalizar valores de tablas | manual | 2d | 2022-07-11 A | 2022-07-12 A | 12 | 100% |  |  | Andres Andrade; Carlos Blanco; Miria Cristina; Robert Mattos | 64h | 64h |
| 21 | 1.4.1.2.3 | 3. Suavizar datos ruidosos | manual | 2d | 2022-07-11 A | 2022-07-12 A | 12 | 100% |  |  | Andres Andrade; Carlos Blanco; Miria Cristina; Robert Mattos | 64h | 64h |
| 22 | 1.4.1.2.4 | 4. Eliminación de valores atipicos | manual | 2d | 2022-07-11 A | 2022-07-12 A | 12 | 100% |  |  | Andres Andrade; Miria Cristina | 32h | 32h |
| 23 | 1.4.1.2.5 | 5. Normalizacion final de datos | manual | 2d | 2022-07-11 A | 2022-07-12 A | 12 | 100% |  |  | Andres Andrade; Miria Cristina | 32h | 32h |
| 24 | 1.4.1.2.6 | **Proceso de creacion** |  | 2d | 2022-07-13 A | 2022-07-14 A |  | 100% |  |  |  | 160h | 160h |
| 25 | 1.4.1.2.6.1 | Identificacion de tablas Fac y Dim | manual | 2d | 2022-07-13 A | 2022-07-14 A | 23 | 100% |  |  | Carlos Blanco; Robert Mattos | 32h | 32h |
| 26 | 1.4.1.2.6.2 | Unificacion de tablas Fac | manual | 2d | 2022-07-13 A | 2022-07-14 A | 23 | 100% |  |  | Andres Andrade; Miria Cristina | 32h | 32h |
| 27 | 1.4.1.2.6.3 | Unificacion de tablas Dim | manual | 2d | 2022-07-13 A | 2022-07-14 A | 23 | 100% |  |  | Andres Andrade; Miria Cristina | 32h | 32h |
| 28 | 1.4.1.2.6.4 | Unificacion de tablas DataMart | manual | 2d | 2022-07-13 A | 2022-07-14 A | 23 | 100% |  |  | Andres Andrade; Miria Cristina | 32h | 32h |
| 29 | 1.4.1.2.6.5 | Verificacion de Resultados | manual | 2d | 2022-07-13 A | 2022-07-14 A | 23 | 100% |  |  | Robert Mattos; Carlos Blanco | 32h | 32h |

Notes:
- 16: 1. LImpieza de Datos / 2. Rellenar valores / 3. Suavizar datos ruidosos / 4. Eliminar valores atipicos / 5. Resolver consistencias
- 18: Tener los datos mas reales posibles

| ID | WBS | Task | Type | Duration | Start | Finish | Predecessors | Complete | Total slack | Free slack | Resources | Work | Actual work |
| --- | --- | --- | --- | --- | --- | --- | --- | --- | --- | --- | --- | --- | --- |
| 30 | 1.4.1.3 | **III Automatizacion DW** |  | 1d | 2022-07-15 A | 2022-07-15 A |  | 100% |  |  |  | 32h | 32h |
| 31 | 1.4.1.3.1 | Automatizacion de Creacion Athena | manual | 1d | 2022-07-15 A | 2022-07-15 A | 29 | 100% |  |  | Andres Andrade; Miria Cristina | 16h | 16h |
| 32 | 1.4.1.3.2 | Verificacion de Automatizacion Athena | manual | 1d | 2022-07-15 A | 2022-07-15 A | 29 | 100% |  |  | Robert Mattos; Carlos Blanco | 16h | 16h |
| 33 | 1.4.1.4 | Entregable II : Diseño Tecnico DataLake y DW | manual | 1d | 2022-07-15 A | 2022-07-15 A |  | 100% |  |  | Andres Andrade; Miria Cristina | 16h | 16h |
| 34 | 1.4.1.5 | Hito Semana2 | milestone, manual | 0d | 2022-07-15 A | 2022-07-15 A |  | 100% |  |  |  |  |  |
| 35 | 1.4.2 | **Semana III** |  | 5d | 2022-07-18 A | 2022-07-22 A |  | 100% |  |  |  | 560h | 560h |
| 36 | 1.4.2.1 | **I Reporte** |  | 3d | 2022-07-18 A | 2022-07-20 A |  | 100% |  |  |  | 480h | 480h |
| 37 | 1.4.2.1.1 | Metrica 1 | manual | 3d | 2022-07-18 A | 2022-07-20 A | 31 | 100% |  |  | Carlos Blanco; Robert Mattos; Andres Andrade | 48h | 48h |
| 38 | 1.4.2.1.2 | Metrica 2 | manual | 3d | 2022-07-18 A | 2022-07-20 A |  | 100% |  |  | Carlos Blanco; Robert Mattos; Andres Andrade | 48h | 48h |
| 39 | 1.4.2.1.3 | Metrica 3 | manual | 3d | 2022-07-18 A | 2022-07-20 A |  | 100% |  |  | Carlos Blanco; Robert Mattos; Andres Andrade | 48h | 48h |
| 40 | 1.4.2.1.4 | Metrica 4 | manual | 3d | 2022-07-18 A | 2022-07-20 A |  | 100% |  |  | Carlos Blanco; Robert Mattos; Andres Andrade | 48h | 48h |
| 41 | 1.4.2.1.5 | Metrica 5 | manual | 3d | 2022-07-18 A | 2022-07-20 A |  | 100% |  |  | Carlos Blanco; Robert Mattos; Andres Andrade | 48h | 48h |
| 42 | 1.4.2.1.6 | Revison de Metricas | manual | 3d | 2022-07-18 A | 2022-07-20 A |  | 100% |  |  | Andres Andrade; Carlos Blanco; Miria Cristina; Robert Mattos | 96h | 96h |
| 43 | 1.4.2.1.7 | Generacion de KPIs | manual | 3d | 2022-07-18 A | 2022-07-20 A | 31 | 100% |  |  | Carlos Blanco; Robert Mattos; Andres Andrade; Miria Cristina | 96h | 96h |
| 44 | 1.4.2.1.8 | Soporte Tecnico Arquitectura | manual | 3d | 2022-07-18 A | 2022-07-20 A |  | 100% |  |  | Andres Andrade; Miria Cristina | 48h | 48h |
| 45 | 1.4.2.2 | **II Storytelling** |  | 2d | 2022-07-21 A | 2022-07-22 A |  | 100% |  |  |  | 16h | 16h |
| 46 | 1.4.2.2.1 | Elaboracion del documento | manual | 2d | 2022-07-21 A | 2022-07-22 A |  | 100% |  |  | Robert Mattos | 16h | 16h |
| 47 | 1.4.2.3 | **III Ajustes** |  | 2d | 2022-07-21 A | 2022-07-22 A |  | 100% |  |  |  | 64h | 64h |
| 48 | 1.4.2.3.1 | Revision y Ajustes | manual | 2d | 2022-07-21 A | 2022-07-22 A |  | 100% |  |  | Andres Andrade; Carlos Blanco; Miria Cristina; Robert Mattos | 64h | 64h |
| 49 | 1.4.3 | Entregable III : Informe Tecnico de Analisis y KPI |  | 1d | 2022-07-08 A | 2022-07-08 A |  | 100% |  |  |  |  |  |
| 50 | 1.4.4 | Hito Semana 3 | milestone | 0d | 2022-07-08 | 2022-07-08 |  |  | 0d |  |  |  |  |
| 51 | 1.4.5 | **Semana IV** |  | 16d | 2022-07-08 | 2022-07-29 |  |  | -3d | 0d |  | 296h |  |
| 52 | 1.4.5.1 | **I Preparar Demo x Equipo** |  | 1d | 2022-07-25 | 2022-07-25 |  |  | -12d | 0d |  | 32h |  |
| 53 | 1.4.5.1.1 | Generacion de la informacion final |  | 1d | 2022-07-25 | 2022-07-25 | 48 |  | -12d | 0d | Robert Mattos | 8h |  |
| 54 | 1.4.5.1.2 | Pruebas de la Solucion |  | 1d | 2022-07-25 | 2022-07-25 | 48 |  | -12d | 0d | Andres Andrade; Carlos Blanco; Miria Cristina | 24h |  |

Notes:
- 37: 1. Comportamiento de ventas por segmentos de negocio y por estados
- 38: 2. Tipos de forma de pago por segmento de negocio y estados
- 39: 3. Costo promedio de Logistica de Transporte por estado
- 40: 4. Distancia promedio de distribucion por ciudad
- 41: 5. Indicador de tiempos promedio y estados de entrega de productos

| ID | WBS | Task | Type | Duration | Start | Finish | Total slack | Free slack | Resources | Work |
| --- | --- | --- | --- | --- | --- | --- | --- | --- | --- | --- |
| 55 | 1.4.5.2 | **II Entregable Final** |  | 2d | 2022-07-28 | 2022-07-29 | 0d |  |  | 192h |
| 56 | 1.4.5.2.1 | Presentacion real del producto | manual | 2d | 2022-07-28 | 2022-07-29 |  |  | Andres Andrade; Carlos Blanco; Miria Cristina; Robert Mattos | 64h |
| 57 | 1.4.5.2.2 | Seguimiento de acciones automaticas | manual | 2d | 2022-07-28 | 2022-07-29 |  |  | Andres Andrade; Carlos Blanco; Miria Cristina; Robert Mattos | 64h |
| 58 | 1.4.5.2.3 | Seguimiento de la visualizacion de reportes | manual | 2d | 2022-07-28 | 2022-07-29 |  |  | Andres Andrade; Carlos Blanco; Miria Cristina; Robert Mattos | 64h |
| 59 | 1.4.5.3 | **III Documentacion** |  | 3d | 2022-07-08 | 2022-07-12 | -3d | 0d |  | 72h |
| 60 | 1.4.5.3.1 | Elaboracion de Documentacion Final |  | 3d | 2022-07-08 | 2022-07-12 | -3d | 0d | Andres Andrade; Carlos Blanco; Miria Cristina | 72h |
| 61 | 1.4.6 | Entregable IV : Informe Final de Funcionalidad |  | 1d | 2022-07-08 | 2022-07-08 | -1d | 0d |  |  |
| 62 | 1.4.7 | Hito Semana4 | milestone | 0d | 2022-07-08 | 2022-07-08 | 0d |  |  |  |
| 63 | 1.5 | **Roles** |  | 1d? | 2022-07-05 | 2022-07-05 | 0d |  |  |  |
| 64 | 1.5.1 | Data Scientist | manual | 1d? | 2022-07-05 | 2022-07-05 |  |  |  |  |
| 65 | 1.5.2 | Data Analyst | manual | 1d? | 2022-07-05 | 2022-07-05 |  |  |  |  |
| 66 | 1.5.3 | Software Engineer ML | manual | 1d? | 2022-07-05 | 2022-07-05 |  |  |  |  |
